# OJTFU_K2_DetailedPlan_Portlet_v0.3

Schedule from MS Project, 2012-05-07 to 2012-09-07.

## Calendars

- Standard: Mon-Fri 08:30-12:00, 13:00-17:30; Sat-Sun off.

## Resources

| Resource |
| --- |
| All team |
| DuyTK1 |
| DuyND2 |
| TuanLM3 |
| All team members |
| DuyND |
| VienBN |
| NhatVM |
| TrietNM |
| TrietTM |

## Schedule

| ID | WBS | Task | Duration | Start | Finish | Predecessors | Total slack | Free slack | Constraint | Resources | Work |
| --- | --- | --- | --- | --- | --- | --- | --- | --- | --- | --- | --- |
| 1 | 1 | **OOPMS** | 90d | 2012-05-07 | 2012-09-07 |  | 0d |  |  |  | 1108h |
| 2 | 1.1 | **Initiation** | 1.5d | 2012-05-07 | 2012-05-08 |  | 0d |  |  | All team members | 12h |
| 3 | 1.1.1 | Add temp | 4h | 2012-05-07 | 2012-05-07 |  | 0d |  | start no earlier than 2012-05-07 |  |  |
| 4 | 1.1.2 | Kick-off meeting | 3h | 2012-05-07 | 2012-05-07 | 3 | 0d |  | start no earlier than 2012-03-12 |  |  |
| 5 | 1.1.3 | Introduce overview about Eclipse plug-in development | 2h | 2012-05-07 | 2012-05-08 | 4 | 0d |  |  |  |  |
| 6 | 1.1.4 | Introduce overview about Android development | 3h | 2012-05-08 | 2012-05-08 | 5 | 0d |  |  |  |  |
| 7 | 1.2 | **Planning** | 2.5d | 2012-05-08 | 2012-05-10 | 2 | 0d |  |  |  | 24h |
| 8 | 1.2.1 | Develop scope statement | 4h | 2012-05-08 | 2012-05-08 |  | 2d |  |  | All team members | 4h |
| 9 | 1.2.2 | Create WBS | 4h | 2012-05-08 | 2012-05-08 |  | 0d |  |  | DuyND | 4h |
| 10 | 1.2.3 | Develop and refine other plans | 2d | 2012-05-09 | 2012-05-10 | 9 | 0d |  |  | All team members | 16h |
| 11 | 1.3 | **Solution** | 8d | 2012-05-11 | 2012-05-22 | 7 | 0d |  |  |  | 112h |
| 12 | 1.3.1 | **Develop functional specifications** | 2d | 2012-05-11 | 2012-05-14 |  | 0d |  |  |  | 16h |
| 13 | 1.3.1.1 | Create SRS | 2d | 2012-05-11 | 2012-05-14 |  | 0d |  | start no earlier than 2012-05-10 | VienBN | 16h |
| 14 | 1.3.2 | **Develop prototype based on functional specifications** | 4d | 2012-05-15 | 2012-05-18 | 13 | 0d |  |  |  | 80h |
| 15 | 1.3.2.1 | ScreenDesign | 2d | 2012-05-15 | 2012-05-16 |  | 2d | 0d | finish no earlier than 2011-05-20 | NhatVM | 16h |
| 16 | 1.3.2.2 | Activity Diagram | 2d | 2012-05-17 | 2012-05-18 | 15 | 2d |  | start no earlier than 2011-05-20 | NhatVM | 16h |
| 17 | 1.3.2.3 | Sequence Diagram | 2d | 2012-05-15 | 2012-05-16 |  | 4d |  | start no earlier than 2011-05-20 | DuyND | 16h |
| 18 | 1.3.2.4 | DDD | 4d | 2012-05-15 | 2012-05-18 |  | 0d |  | start no earlier than 2011-05-20 | TrietNM | 32h |
| 19 | 1.3.3 | Review functional specifications (Offline) | 1d | 2012-05-21 | 2012-05-21 | 18 | 0d |  | start no earlier than 2011-05-23 | All team members | 8h |
| 20 | 1.3.4 | Assess Understand the requirement | 1d | 2012-05-22 | 2012-05-22 | 19 | 0d |  |  | All team members | 8h |
| 21 | 1.4 | **Construction** | 72d | 2012-05-23 | 2012-08-30 | 11 | 0d |  |  |  | 528h |
| 22 | 1.4.1 | **Development** | 42d | 2012-05-23 | 2012-07-19 |  | 0d |  |  |  | 396h |
| 23 | 1.4.1.1 | Add temp | 4h | 2012-05-23 | 2012-05-23 | 11 | 0d |  |  |  |  |
| 24 | 1.4.1.2 | Add temp | 23d | 2012-05-23 | 2012-06-25 | 23 | 0d |  |  |  |  |
| 25 | 1.4.1.3 | Create coding plan | 4h | 2012-06-25 | 2012-06-25 | 24 | 0d |  |  | All team members | 4h |

| ID | WBS | Task | Duration | Start | Finish | Predecessors | Total slack | Constraint | Resources | Work |
| --- | --- | --- | --- | --- | --- | --- | --- | --- | --- | --- |
| 26 | 1.4.1.4 | **Development** | 11d | 2012-06-26 | 2012-07-10 | 25 | 0d |  |  | 352h |
| 27 | 1.4.1.4.1 | Supermarket API use (Include working with Customers) | 9d | 2012-06-26 | 2012-07-06 |  | 0d |  | VienBN | 72h |
| 28 | 1.4.1.4.2 | **Screen design** | 9d | 2012-06-26 | 2012-07-06 |  | 0d |  | NhatVM | 72h |
| 29 | 1.4.1.4.2.1 | Main Form | 2d | 2012-06-26 | 2012-06-27 |  | 0d |  |  |  |
| 30 | 1.4.1.4.2.2 | Map Form | 2d | 2012-06-28 | 2012-06-29 | 29 | 0d |  |  |  |
| 31 | 1.4.1.4.2.3 | Detail Market Form | 2d | 2012-07-02 | 2012-07-03 | 30 | 0d |  |  |  |
| 32 | 1.4.1.4.2.4 | Product List Form | 2d | 2012-07-04 | 2012-07-05 | 31 | 0d |  |  |  |
| 33 | 1.4.1.4.2.5 | Cart Form | 1d | 2012-07-06 | 2012-07-06 | 32 | 0d |  |  |  |
| 34 | 1.4.1.4.3 | Database Design | 5d | 2012-06-26 | 2012-07-02 |  | 0d |  | TrietNM; DuyND | 80h |
| 35 | 1.4.1.4.4 | **Functions code** | 6d | 2012-07-03 | 2012-07-10 |  | 0d |  |  | 128h |
| 36 | 1.4.1.4.4.1 | Function View main function | 2d | 2012-07-03 | 2012-07-04 | 34 | 0d |  | DuyND | 16h |
| 37 | 1.4.1.4.4.2 | Function View supermarket Map | 2d | 2012-07-05 | 2012-07-06 | 36 | 0d |  | DuyND | 16h |
| 38 | 1.4.1.4.4.3 | Function View Detail infor | 2d | 2012-07-09 | 2012-07-10 | 37 | 0d |  | TrietNM | 16h |
| 39 | 1.4.1.4.4.4 | Function Display list of Products | 2d | 2012-07-03 | 2012-07-04 | 34 | 0d |  | TrietNM | 16h |
| 40 | 1.4.1.4.4.5 | Function Search | 2d | 2012-07-05 | 2012-07-06 | 39 | 0d |  | TrietNM | 16h |
| 41 | 1.4.1.4.4.6 | Function Buy | 2d | 2012-07-09 | 2012-07-10 | 40 | 0d |  | TrietNM | 16h |
| 42 | 1.4.1.4.4.7 | Function Check out shopping cart | 2d | 2012-07-09 | 2012-07-10 | 28 | 0d |  | NhatVM | 16h |
| 43 | 1.4.1.4.4.8 | Function Submit shopping cart | 2d | 2012-07-09 | 2012-07-10 | 27 | 0d |  | VienBN | 16h |
| 44 | 1.4.1.5 | Review code offline | 2d | 2012-07-11 | 2012-07-12 | 35 | 0d |  | All team members | 16h |
| 45 | 1.4.1.6 | Modify if needed | 2d | 2012-07-13 | 2012-07-16 | 44 | 0d |  |  |  |
| 46 | 1.4.1.7 | Integration | 3d | 2012-07-17 | 2012-07-19 | 45 | 0d |  | All team members | 24h |
| 47 | 1.4.2 | **Testing** | 30d | 2012-07-20 | 2012-08-30 | 46 | 0d |  |  | 132h |
| 48 | 1.4.2.1 | Add temp | 4h | 2012-07-20 | 2012-07-20 | 35 | 0d |  |  |  |
| 49 | 1.4.2.2 | Add temp | 13d | 2012-07-20 | 2012-08-08 | 48 | 0d |  |  |  |
| 50 | 1.4.2.3 | Create Testing plan | 4h | 2012-08-08 | 2012-08-08 | 49 | 0d | start no earlier than 2011-05-30 | All team members | 4h |

| ID | WBS | Task | Duration | Start | Finish | Predecessors | Total slack | Constraint | Resources | Work |
| --- | --- | --- | --- | --- | --- | --- | --- | --- | --- | --- |
| 51 | 1.4.2.4 | **Unit Testing** | 8d | 2012-08-09 | 2012-08-20 |  | 0d |  |  | 64h |
| 52 | 1.4.2.4.1 | Create Test case | 1d | 2012-08-09 | 2012-08-09 | 50 | 0d |  |  | 8h |
| 53 | 1.4.2.4.2 | Review test case online | 4h | 2012-08-10 | 2012-08-10 | 52 | 0d |  |  | 4h |
| 54 | 1.4.2.4.3 | Create Test code | 2d | 2012-08-10 | 2012-08-14 | 53 | 0d |  |  | 16h |
| 55 | 1.4.2.4.4 | Review Test code and Unit Test Statistical Report | 4h | 2012-08-14 | 2012-08-14 | 54 | 0d |  |  | 4h |
| 56 | 1.4.2.4.5 | Modify code (fix bug, if any) | 2d | 2012-08-15 | 2012-08-16 | 55 | 0d |  |  | 16h |
| 57 | 1.4.2.4.6 | Re-test modified code | 1d | 2012-08-17 | 2012-08-17 | 56 | 0d |  |  | 8h |
| 58 | 1.4.2.4.7 | Assess Unit Testing (Write Test Case, Test Code, Test Report) | 1d | 2012-08-20 | 2012-08-20 | 57 | 0d |  |  | 8h |
| 59 | 1.4.2.5 | **Integration Testing** | 8d | 2012-08-21 | 2012-08-30 |  | 0d |  |  | 64h |
| 60 | 1.4.2.5.1 | Create Test case | 1d | 2012-08-21 | 2012-08-21 | 46, 58 | 0d |  | All team members | 8h |
| 61 | 1.4.2.5.2 | Review test case online | 4h | 2012-08-22 | 2012-08-22 | 60 | 0d |  | All team members | 4h |
| 62 | 1.4.2.5.3 | Create Test code | 2d | 2012-08-22 | 2012-08-24 | 61 | 0d |  | All team members | 16h |
| 63 | 1.4.2.5.4 | Review Test code and Unit Test Statistical Report | 4h | 2012-08-24 | 2012-08-24 | 62 | 0d |  | All team members | 4h |
| 64 | 1.4.2.5.5 | Modify code (fix bug, if any) | 2d | 2012-08-27 | 2012-08-28 | 63 | 0d |  | All team members | 16h |
| 65 | 1.4.2.5.6 | Re-test modified code | 1d | 2012-08-29 | 2012-08-29 | 64 | 0d |  | All team members | 8h |
| 66 | 1.4.2.5.7 | Assess Unit Testing (Write Test Case, Test Code, Test Report) | 1d | 2012-08-30 | 2012-08-30 | 65 | 0d |  | All team members | 8h |
| 67 | 1.5 | Monitoring and Controlling | 48d | 2012-05-11 | 2012-07-17 | 7 | 30d | start no earlier than 2012-03-16 | DuyND | 384h |
| 68 | 1.6 | **Termination** | 6d | 2012-08-31 | 2012-09-07 | 21 | 0d |  | All team members | 48h |
| 69 | 1.6.1 | Milestone assessment | 3d | 2012-08-31 | 2012-09-04 |  | 0d |  | All team members |  |
| 70 | 1.6.2 | Deployment | 3d | 2012-09-05 | 2012-09-07 | 69 | 0d |  |  |  |
